# Proyecto RECREWEB

Schedule from MS Project, 2022-07-12 to 2023-02-24, costs in $.

## Calendars

- Estándar: Mon-Fri 09:00-13:00, 15:00-19:00; Sat-Sun off.

## Resources

| Resource | Rate |
| --- | --- |
| JefeA | 18000 |
| AnalistaW | 9375 |
| AnalistaD | 9375 |
| AnalistaP | 11812.5 |
| Administrativo | 8250 |
| Servidor especial | 10000 |
| Proveedor | 40000 |
| Empresa especializada | 300000 |

## Schedule

| ID | WBS | Task | Type | Duration | Start | Finish | Predecessors | Total slack | Resources | Work | Cost |
| --- | --- | --- | --- | --- | --- | --- | --- | --- | --- | --- | --- |
| 1 | 1 | **Analisis de la situación actual** |  | 15d | 2022-07-12 09:00 | 2022-08-01 19:00 |  | 0d |  | 372h | 4,194,000 |
| 2 | 1.1 | Estudio de informes detallados | manual | 4d | 2022-07-12 09:00 | 2022-07-15 19:00 |  |  | JefeA; AnalistaW; AnalistaD; AnalistaP; Administrativo [50%] | 144h | 1,614,000 |
| 3 | 1.2 | Depuración y carga de datos actualizados | manual | 7d | 2022-07-18 09:00 | 2022-07-26 19:00 | 2 |  | JefeA [50%]; AnalistaD; AnalistaP; Administrativo | 168h | 1,845,000 |
| 4 | 1.3 | Estudio de productos actuales | manual | 5d | 2022-07-26 09:00 | 2022-08-01 19:00 | 3 |  | JefeA [50%]; AnalistaW | 60h | 735,000 |
| 5 | 1.4 | Entrega del informe del estudio de la situación actual | milestone, manual | 0d | 2022-07-12 09:00 | 2022-07-12 09:00 |  |  |  |  |  |
| 6 | 2 | **Analisis del sistema** |  | 41d? | 2022-08-02 09:00 | 2022-09-27 19:00 |  | 0d |  | 728.96h | 9,184,200 |
| 7 | 2.1 | Especificación requisitos necesarios | manual | 5d | 2022-08-02 09:00 | 2022-08-08 19:00 | 4 |  | Administrativo [50%]; JefeA; AnalistaW; AnalistaP; AnalistaD | 180h | 2,107,500 |
| 8 | 2.2 | Analizar el sistema actual | manual | 4d | 2022-08-09 09:00 | 2022-08-12 19:00 | 7 |  | AnalistaP; AnalistaD; AnalistaW; JefeA | 128h | 1,554,000 |
| 9 | 2.3 | Analisis de estructuras de datos | manual | 8d | 2022-08-15 09:00 | 2022-08-24 19:00 | 8 |  | JefeA; AnalistaD | 128h | 1,752,000 |
| 10 | 2.4 | Analisis de procesos | manual | 1d? | 2022-08-25 09:00 | 2022-08-25 19:00 | 9 |  |  |  |  |
| 11 | 2.5 | Analisis del proceso de oferta y demanda | manual | 6d | 2022-08-26 09:00 | 2022-09-02 19:00 | 10 |  | JefeA [33%]; AnalistaP | 63.84h | 852,120 |
| 12 | 2.6 | Gestión de datos e informes | manual | 4d | 2022-09-05 09:00 | 2022-09-08 19:00 | 11 |  | JefeA [33%]; AnalistaD | 42.56h | 490,080 |
| 13 | 2.7 | Comunicación en web | manual | 4d | 2022-09-09 09:00 | 2022-09-14 19:00 | 12 |  | JefeA; AnalistaW [33%] | 42.56h | 675,000 |
| 14 | 2.8 | Interfaces de usuario | manual | 1d? | 2022-09-15 09:00 | 2022-09-15 19:00 | 13 |  |  |  |  |
| 15 | 2.9 | Interfaces de carga | manual | 2d | 2022-09-16 09:00 | 2022-09-19 19:00 | 14 |  | JefeA; AnalistaW; AnalistaD | 48h | 588,000 |
| 16 | 2.10 | Interfaces de consulta y reserva | manual | 3d | 2022-09-20 09:00 | 2022-09-22 19:00 | 15 |  | JefeA [50%]; AnalistaW [50%]; AnalistaP | 48h | 612,000 |
| 17 | 2.11 | Interfaz de informes | manual | 3d | 2022-09-23 09:00 | 2022-09-27 19:00 | 16 |  | JefeA [50%]; AnalistaW [50%]; AnalistaD | 48h | 553,500 |
| 18 | 3 | **Diseño del sistema** |  | 44d | 2022-09-28 09:00 | 2022-11-28 19:00 |  | 0d |  | 658.4h | 7,909,500 |
| 19 | 3.1 | Diseño de la estructura de datos | manual | 6d | 2022-09-28 09:00 | 2022-10-05 19:00 | 17 |  | JefeA [10%]; AnalistaD; Administrativo [10%] | 57.6h | 576,000 |
| 20 | 3.2 | Diseño del proceso de carga | manual | 4d | 2022-10-06 09:00 | 2022-10-11 19:00 | 19 |  | JefeA [10%]; AnalistaD; Administrativo [10%] | 38.4h | 384,000 |
| 21 | 3.3 | Diseño del proceso de consulta | manual | 4d | 2022-10-12 09:00 | 2022-10-17 19:00 | 20 |  | JefeA [10%]; AnalistaP; Administrativo [10%] | 38.4h | 462,000 |
| 22 | 3.4 | Diseño del proceso de venta | manual | 4d | 2022-10-18 09:00 | 2022-10-21 19:00 | 21 |  | JefeA [10%]; AnalistaP; Administrativo [10%] | 38.4h | 462,000 |
| 23 | 3.5 | Diseño del proceso de informes | manual | 3d | 2022-10-24 09:00 | 2022-10-26 19:00 | 22 |  | JefeA; AnalistaW; AnalistaP; AnalistaD; Administrativo [10%] | 98.4h | 1,185,300 |
| 24 | 3.6 | Diseño de la interfaz de usuario | manual | 3d | 2022-10-27 09:00 | 2022-10-31 19:00 | 23 |  | JefeA; AnalistaW; AnalistaD; AnalistaP; Administrativo [10%] | 98.4h | 1,185,300 |
| 25 | 3.7 | Diseño de la implantación web | manual | 6d | 2022-11-01 09:00 | 2022-11-08 19:00 | 24 |  | JefeA; AnalistaW; AnalistaP; AnalistaD; Administrativo [10%] | 196.8h | 2,370,600 |
| 26 | 3.8 | Diseño del plan de pruebas | manual | 4d | 2022-11-09 09:00 | 2022-11-14 19:00 | 25 |  | JefeA [10%]; Administrativo [10%]; AnalistaD [10%]; AnalistaP [10%]; AnalistaW [10%] | 16h | 181,800 |
| 27 | 3.9 | Diseño del plan de implantación | manual | 5d | 2022-11-15 09:00 | 2022-11-21 19:00 | 26 |  | Administrativo [10%]; AnalistaD [10%]; AnalistaP [10%]; AnalistaW [10%]; JefeA [10%] | 20h | 227,250 |
| 28 | 3.10 | Diseño del plan de formación | manual | 5d | 2022-11-22 09:00 | 2022-11-28 19:00 | 27 |  | Administrativo [10%]; AnalistaD [10%]; AnalistaP [10%]; AnalistaW [10%]; JefeA | 56h | 875,250 |

| ID | WBS | Task | Type | Duration | Start | Finish | Predecessors | Total slack | Constraint | Resources | Work | Cost |
| --- | --- | --- | --- | --- | --- | --- | --- | --- | --- | --- | --- | --- |
| 29 | 4 | **Implementación** |  | 35.75d | 2022-11-29 09:00 | 2023-01-17 17:00 |  | 0d |  | Servidor especial; Proveedor | 1342h | 15,596,000 |
| 30 | 4.1 | Elaboracion del software y los distintos procesos | manual | 12d | 2022-11-29 09:00 | 2022-12-14 19:00 | 28 |  |  | AnalistaD; AnalistaP; AnalistaW; JefeA | 384h | 4,662,000 |
| 31 | 4.2 | Implementación de los módulos de interconección | manual | 8d | 2022-12-15 09:00 | 2022-12-26 19:00 | 30 |  |  | AnalistaD; AnalistaP; AnalistaW; JefeA | 256h | 3,108,000 |
| 32 | 4.3 | Pruebas | manual | 12d | 2022-12-27 09:00 | 2023-01-11 19:00 | 31 |  |  | AnalistaD; AnalistaP; AnalistaW; JefeA | 384h | 4,662,000 |
| 33 | 4.4 | Documentación e informes | manual | 3.75d | 2023-01-12 09:00 | 2023-01-17 17:00 | 32 |  |  | Administrativo | 32h | 264,000 |
| 34 | 4.5 | Entrega del sistema | milestone, manual | 0d | 2022-11-29 09:00 | 2022-11-29 09:00 |  |  |  |  |  |  |
| 35 | 5 | **Pruebas, Formación e implantación** |  | 160d | 2022-07-18 09:00 | 2023-02-24 19:00 |  | 0d |  |  | 944h | 11,274,000 |
| 36 | 5.1 | Gestión del plan de formación | manual | 6d | 2023-01-18 09:00 | 2023-01-25 19:00 | 33 |  |  | Administrativo; AnalistaD; AnalistaP; AnalistaW; JefeA | 240h | 2,727,000 |
| 37 | 5.2 | Implantación del sistema | manual | 14d | 2023-01-26 09:00 | 2023-02-14 19:00 | 36 |  |  | AnalistaD; AnalistaP; AnalistaW; JefeA | 448h | 5,439,000 |
| 38 | 5.3 | Tareas de prueba de los productos finales instalados | manual | 8d | 2023-02-15 09:00 | 2023-02-24 19:00 | 37 |  |  | AnalistaD; AnalistaP; AnalistaW; JefeA | 256h | 3,108,000 |
| 39 | 5.4 | **Reuniones para un seguimiento de los avances del proyecto y de las especificaciones de usuario** |  | 150.75d | 2022-07-18 09:00 | 2023-02-13 17:00 |  | 0d |  |  |  |  |
| 40 | 5.4.1 | Reuniones para un seguimiento de los avances del proyecto y de las especificaciones de usuario 1 | manual | 4h | 2022-07-18 09:00 | 2022-07-18 13:00 |  |  | start no earlier than 2022-07-18 09:00 |  |  |  |
| 41 | 5.4.2 | Reuniones para un seguimiento de los avances del proyecto y de las especificaciones de usuario 2 | manual | 4h | 2022-08-01 09:00 | 2022-08-01 13:00 |  |  | start no earlier than 2022-08-01 09:00 |  |  |  |
| 42 | 5.4.3 | Reuniones para un seguimiento de los avances del proyecto y de las especificaciones de usuario 3 | manual | 4h | 2022-08-15 09:00 | 2022-08-15 13:00 |  |  | start no earlier than 2022-08-15 09:00 |  |  |  |
| 43 | 5.4.4 | Reuniones para un seguimiento de los avances del proyecto y de las especificaciones de usuario 4 | manual | 4h | 2022-08-29 09:00 | 2022-08-29 13:00 |  |  | start no earlier than 2022-08-29 09:00 |  |  |  |
| 44 | 5.4.5 | Reuniones para un seguimiento de los avances del proyecto y de las especificaciones de usuario 5 | manual | 4h | 2022-09-12 09:00 | 2022-09-12 13:00 |  |  | start no earlier than 2022-09-12 09:00 |  |  |  |
| 45 | 5.4.6 | Reuniones para un seguimiento de los avances del proyecto y de las especificaciones de usuario 6 | manual | 4h | 2022-09-26 09:00 | 2022-09-26 13:00 |  |  | start no earlier than 2022-09-26 09:00 |  |  |  |
| 46 | 5.4.7 | Reuniones para un seguimiento de los avances del proyecto y de las especificaciones de usuario 7 | manual | 4h | 2022-10-10 09:00 | 2022-10-10 13:00 |  |  | start no earlier than 2022-10-10 09:00 |  |  |  |
| 47 | 5.4.8 | Reuniones para un seguimiento de los avances del proyecto y de las especificaciones de usuario 8 | manual | 4h | 2022-10-24 09:00 | 2022-10-24 13:00 |  |  | start no earlier than 2022-10-24 09:00 |  |  |  |
| 48 | 5.4.9 | Reuniones para un seguimiento de los avances del proyecto y de las especificaciones de usuario 9 | manual | 4h | 2022-11-07 09:00 | 2022-11-07 13:00 |  |  | start no earlier than 2022-11-07 09:00 |  |  |  |
| 49 | 5.4.10 | Reuniones para un seguimiento de los avances del proyecto y de las especificaciones de usuario 10 | manual | 4h | 2022-11-21 09:00 | 2022-11-21 13:00 |  |  | start no earlier than 2022-11-21 09:00 |  |  |  |
| 50 | 5.4.11 | Reuniones para un seguimiento de los avances del proyecto y de las especificaciones de usuario 11 | manual | 4h | 2022-12-05 09:00 | 2022-12-05 13:00 |  |  | start no earlier than 2022-12-05 09:00 |  |  |  |
| 51 | 5.4.12 | Reuniones para un seguimiento de los avances del proyecto y de las especificaciones de usuario 12 | manual | 4h | 2022-12-19 09:00 | 2022-12-19 13:00 |  |  | start no earlier than 2022-12-19 09:00 |  |  |  |
| 52 | 5.4.13 | Reuniones para un seguimiento de los avances del proyecto y de las especificaciones de usuario 13 | manual | 4h | 2023-01-02 09:00 | 2023-01-02 13:00 |  |  | start no earlier than 2023-01-02 09:00 |  |  |  |
| 53 | 5.4.14 | Reuniones para un seguimiento de los avances del proyecto y de las especificaciones de usuario 14 | manual | 4h | 2023-01-16 09:00 | 2023-01-16 13:00 |  |  | start no earlier than 2023-01-16 09:00 |  |  |  |
| 54 | 5.4.15 | Reuniones para un seguimiento de los avances del proyecto y de las especificaciones de usuario 15 | manual | 4h | 2023-01-30 09:00 | 2023-01-30 13:00 |  |  | start no earlier than 2023-01-30 09:00 |  |  |  |
| 55 | 5.4.16 | Reuniones para un seguimiento de los avances del proyecto y de las especificaciones de usuario 16 | manual | 4h | 2023-02-13 09:00 | 2023-02-13 13:00 |  |  | start no earlier than 2023-02-13 09:00 |  |  |  |

| ID | WBS | Task | Type | Duration | Start | Finish | Total slack | Constraint |
| --- | --- | --- | --- | --- | --- | --- | --- | --- |
| 56 | 5.4.17 | **Reuniones para presentar el seguimiento del proyecto** |  | 135.75d | 2022-08-08 09:00 | 2023-02-13 17:00 | 0d |  |
| 57 | 5.4.17.1 | Reuniones para presentar el seguimiento del proyecto 1 | manual | 6h | 2022-08-08 09:00 | 2022-08-08 17:00 |  | start no earlier than 2022-08-08 09:00 |
| 58 | 5.4.17.2 | Reuniones para presentar el seguimiento del proyecto 2 | manual | 6h | 2022-09-12 09:00 | 2022-09-12 17:00 |  | start no earlier than 2022-09-12 09:00 |
| 59 | 5.4.17.3 | Reuniones para presentar el seguimiento del proyecto 3 | manual | 6h | 2022-10-10 09:00 | 2022-10-10 17:00 |  | start no earlier than 2022-10-10 09:00 |
| 60 | 5.4.17.4 | Reuniones para presentar el seguimiento del proyecto 4 | manual | 6h | 2022-11-14 09:00 | 2022-11-14 17:00 |  | start no earlier than 2022-11-14 09:00 |
| 61 | 5.4.17.5 | Reuniones para presentar el seguimiento del proyecto 5 | manual | 6h | 2022-12-12 09:00 | 2022-12-12 17:00 |  | start no earlier than 2022-12-12 09:00 |
| 62 | 5.4.17.6 | Reuniones para presentar el seguimiento del proyecto 6 | manual | 6h | 2023-01-09 09:00 | 2023-01-09 17:00 |  | start no earlier than 2023-01-09 09:00 |
| 63 | 5.4.17.7 | Reuniones para presentar el seguimiento del proyecto 7 | manual | 6h | 2023-02-13 09:00 | 2023-02-13 17:00 |  | start no earlier than 2023-02-13 09:00 |
